# HRM Detail Plan

Schedule from MS Project, 2011-09-27 to 2012-05-02, status date 2012-03-09, A marks actual dates.

## Calendars

- HRM_hk1.0: Mon off; Tue 08:00-11:00, 13:00-16:00, 19:00-21:00; Wed 13:00-15:30; Thu 08:00-11:00, 13:00-16:00, 19:00-21:00; Fri 13:00-17:00; Sat 08:00-11:00, 13:00-15:30; Sun off.
- HRM_hk2.0: Mon 19:00-21:00; Tue-Wed 08:00-11:00, 13:00-16:00, 19:00-21:00; Thu 19:00-21:00; Fri-Sat 08:00-11:00, 13:00-16:00, 19:00-21:00; Sun off.

## Resources

| Resource |
| --- |
| Nhung |
| Quyet |
| Nguyen |
| Loc |
| Dang |
| Tung |
| Tuong |
| Tan |

## Schedule

| ID | WBS | Task | Type | Duration | Start | Finish | Predecessors | Complete | Remaining | Baseline start | Baseline finish | Baseline duration | Baseline 1 start | Baseline 1 finish | Total slack | Constraint | Resources | Work | Actual work |
| --- | --- | --- | --- | --- | --- | --- | --- | --- | --- | --- | --- | --- | --- | --- | --- | --- | --- | --- | --- |
| 1 | 1 | **Human Resource Management** |  | 109.69d? | 2011-09-27 A | 2012-05-02 |  | 72% | 30.56d? | 2011-09-22 | 2012-04-30 | 222d? | 2011-09-26 | 2012-04-30 | 0d |  |  | 5959.8h | 4519.8h |
| 2 | 1.1 | Kick off meeting | milestone | 0d | 2011-09-27 | 2011-09-27 |  |  |  |  |  |  | 2011-09-27 | 2011-09-27 | 109.69d | start no earlier than 2011-09-27 | Dang; Loc; Nguyen; Nhung; Quyet; Tan; Tung; Tuong |  |  |
| 3 | 1.2 | **Project Management** |  | 60.81d? | 2011-09-27 A | 2012-01-25 A | 2 | 100% |  | 2011-10-01 | 2012-04-17 | 200d? | 2011-09-28 | 2012-04-30 |  |  |  | 256.75h | 256.75h |
| 4 | 1.2.1 | **Start Up** |  | 60.81d? | 2011-09-27 A | 2012-01-25 A |  | 100% |  | 2011-09-22 | 2012-04-17 | 209d? | 2011-09-28 | 2011-09-30 |  |  |  | 256.75h | 256.75h |
| 5 | 1.2.1.1 | **Research process** |  | 30.81d? | 2011-09-27 A | 2011-11-25 A |  | 100% |  | 2011-10-01 | 2012-03-22 | 174d | 2011-09-28 | 2011-09-29 |  |  |  | 128.5h | 128.5h |
| 6 | 1.2.1.1.1 | Requirement Process |  | 3d? | 2011-09-27 A | 2011-10-01 A |  | 100% |  |  |  |  | 2011-09-28 | 2011-09-29 |  | finish no earlier than 2011-10-01 | Nguyen [50%]; Quyet [50%] | 24h | 24h |
| 7 | 1.2.1.1.2 | Architect process |  | 3d? | 2011-09-27 A | 2011-10-01 A | 6SS | 100% |  |  |  |  | 2011-09-28 | 2011-09-29 |  | finish no earlier than 2011-10-01 | Tuong [50%]; Tan [50%] | 18h | 18h |
| 8 | 1.2.1.1.3 | Detail design process |  | 3d? | 2011-09-27 A | 2011-10-01 A | 6SS | 100% |  |  |  |  | 2011-09-28 | 2011-09-29 |  | finish no earlier than 2011-10-01 | Dang [50%]; Loc [50%] | 24h | 24h |
| 9 | 1.2.1.1.4 | Testing process |  | 3d? | 2011-09-27 A | 2011-10-01 A | 6SS | 100% |  |  |  |  | 2011-09-28 | 2011-09-28 |  | start no earlier than 2011-09-27 | Tung [50%] | 12h | 12h |
| 10 | 1.2.1.1.5 | Risk management |  | 3d? | 2011-09-27 A | 2011-10-01 A | 6SS | 100% |  |  |  |  | 2011-09-28 | 2011-09-28 |  | finish no earlier than 2011-10-01 | Nhung [50%] | 14h | 14h |
| 11 | 1.2.1.1.6 | Measurement management |  | 3d? | 2011-11-16 A | 2011-11-22 A | 10 | 100% |  |  |  |  | 2011-09-28 | 2011-09-28 |  | start no earlier than 2011-11-16 | Nhung | 24h | 24h |
| 12 | 1.2.1.1.7 | Change management |  | 1.56d? | 2011-11-23 A | 2011-11-25 A | 11 | 100% |  |  |  |  | 2011-09-28 | 2011-09-28 |  | start no earlier than 2011-11-23 | Nhung | 12.5h | 12.5h |
| 13 | 1.2.1.2 | **Develop Project Plan** |  | 52.81d? | 2011-10-04 A | 2012-01-17 A |  | 100% |  | 2011-09-22 | 2011-09-26 | 5d | 2011-09-28 | 2011-09-29 |  |  |  | 101.75h | 101.75h |
| 14 | 1.2.1.2.1 | Requirement Process |  | 1.81d? | 2011-10-04 A | 2011-10-06 A | 6 | 100% |  |  |  |  | 2011-09-28 | 2011-09-29 |  | finish no earlier than 2011-10-05 | Nguyen [50%] | 7.25h | 7.25h |
| 15 | 1.2.1.2.2 | Architect process |  | 1.81d? | 2011-10-04 A | 2011-10-06 A | 7 | 100% |  |  |  |  | 2011-09-28 | 2011-09-29 |  | finish no earlier than 2011-10-05 | Tuong [50%]; Tan [50%] | 12.25h | 12.25h |
| 16 | 1.2.1.2.3 | Detail design process |  | 1.81d? | 2011-10-04 A | 2011-10-06 A | 8 | 100% |  |  |  |  | 2011-09-28 | 2011-09-29 |  | finish no earlier than 2011-10-05 | Dang [50%]; Loc [50%] | 14.5h | 14.5h |
| 17 | 1.2.1.2.4 | Testing process |  | 1.81d? | 2011-10-04 A | 2011-10-06 A | 9 | 100% |  |  |  |  | 2011-09-28 | 2011-09-28 |  | finish no earlier than 2011-10-05 | Tung [50%] | 7.25h | 7.25h |
| 18 | 1.2.1.2.5 | Risk management |  | 2.5d? | 2011-11-26 A | 2011-12-01 A | 12 | 100% |  |  |  |  | 2011-09-28 | 2011-09-28 |  | start no earlier than 2011-11-26 | Nhung [50%] | 10h | 10h |
| 19 | 1.2.1.2.6 | Measurement management |  | 8d? | 2011-12-22 A | 2012-01-10 A | 18 | 100% |  |  |  |  | 2011-09-28 | 2011-09-28 |  | finish no earlier than 2012-01-10 | Nhung | 42.5h | 42.5h |
| 20 | 1.2.1.2.7 | Change management |  | 1d? | 2012-01-14 A | 2012-01-17 A | 19 | 100% |  |  |  |  | 2011-09-28 | 2011-09-28 |  | finish no earlier than 2012-01-17 | Nhung | 8h | 8h |
| 21 | 1.2.1.3 | Develop Detail Plan |  | 3.31d | 2012-01-18 A | 2012-01-25 A | 20 | 100% |  | 2011-09-22 | 2011-09-24 | 3d | 2011-09-28 | 2011-09-30 |  | finish no earlier than 2012-01-21 | Nhung | 26.5h | 26.5h |
| 22 | 1.3 | **Requirement Analysis** |  | 56.75d? | 2011-09-27 A | 2012-01-17 A | 2 | 100% |  | 2011-10-01 | 2011-11-20 | 51d? | 2011-10-01 | 2011-12-29 |  |  |  | 1829.05h | 1829.05h |
| 23 | 1.3.1 | Elicitate requirement |  | 2.81d? | 2011-09-27 A | 2011-09-30 A |  | 100% |  | 2011-10-01 | 2011-11-12 | 43d | 2011-10-01 | 2011-12-25 |  | start no earlier than 2011-09-27 | Dang [50%]; Loc [50%]; Nguyen [50%]; Nhung [50%]; Quyet [50%]; Tan [50%]; Tung [50%]; Tuong [50%] | 73.75h | 73.75h |
| 24 | 1.3.2 | Analysis requirement |  | 3d? | 2011-10-01 A | 2011-10-07 A | 23 | 100% |  | 2011-11-20 | 2011-11-20 | 0d? | 2011-10-01 | 2011-12-25 |  | finish no earlier than 2011-10-06 | Dang [50%]; Loc [50%]; Nguyen [50%]; Nhung [50%]; Quyet [50%]; Tan [50%]; Tung [50%]; Tuong [50%] | 103.25h | 103.25h |

| ID | WBS | Task | Type | Duration | Start | Finish | Predecessors | Complete | Baseline start | Baseline finish | Baseline duration | Baseline 1 start | Baseline 1 finish | Constraint | Resources | Work | Actual work |
| --- | --- | --- | --- | --- | --- | --- | --- | --- | --- | --- | --- | --- | --- | --- | --- | --- | --- |
| 25 | 1.3.3 | **Develop Concept of Operation** |  | 33.56d? | 2011-10-04 A | 2011-12-08 A |  | 100% | 2011-10-08 | 2011-10-22 | 15d | 2011-10-01 | 2011-11-30 |  |  | 863.3h | 863.3h |
| 26 | 1.3.3.1 | **Document ConsOpt( Draft version)** |  | 22.31d? | 2011-10-04 A | 2011-11-16 A |  | 100% |  |  |  | 2011-10-01 | 2011-10-05 |  |  | 195.3h | 195.3h |
| 27 | 1.3.3.1.1 | Introduction |  | 4.44d? | 2011-10-08 A | 2011-10-18 A | 24 | 100% |  |  |  | 2011-10-01 | 2011-10-01 | start no earlier than 2011-10-07 | Loc [50%] | 17.75h | 17.75h |
| 28 | 1.3.3.1.2 | Current system |  | 4d? | 2011-10-06 A | 2011-10-14 A |  | 100% |  |  |  | 2011-10-01 | 2011-10-01 | finish no earlier than 2011-10-14 | Dang [50%] | 16h | 16h |
| 29 | 1.3.3.1.3 | Reason for improvement |  | 2.5d? | 2011-10-15 A | 2011-10-20 A | 28 | 100% |  |  |  | 2011-10-01 | 2011-10-01 | start no earlier than 2011-10-15 | Dang [50%] | 10h | 10h |
| 30 | 1.3.3.1.4 | **System future** |  | 22.31d? | 2011-10-04 A | 2011-11-16 A |  | 100% |  |  |  | 2011-10-01 | 2011-10-05 |  |  | 149.75h | 149.75h |
| 31 | 1.3.3.1.4.1 | Information Catgegories |  | 3d? | 2011-10-08 A | 2011-10-14 A | 24 | 100% |  |  |  |  |  | start no earlier than 2011-10-07 | Nhung | 24h | 24h |
| 32 | 1.3.3.1.4.2 | Processes |  | 3d? | 2011-10-14 A | 2011-10-16 A | 31 | 100% |  |  |  |  |  |  | Dang [50%] | 12h | 12h |
| 33 | 1.3.3.1.4.3 | Processes: Mô hình phân rã chức năng hồ sơ nhân sự |  | 13.06d? | 2011-10-18 A | 2011-11-16 A | 32 | 100% |  |  |  |  |  | finish no earlier than 2011-11-09 | Nhung | 104.5h | 104.5h |
| 34 | 1.3.3.1.4.4 | Scenario |  | 2.31d? | 2011-10-04 A | 2011-10-07 A | 9 | 100% |  |  |  |  |  | finish no earlier than 2011-10-06 | Tung [50%] | 9.25h | 9.25h |
| 35 | 1.3.3.1.5 | Effect |  | 2.25d? | 2011-10-19 A | 2011-10-22 A | 27 | 100% |  |  |  | 2011-10-01 | 2011-10-01 | finish no earlier than 2011-10-16 | Loc [10%] | 1.8h | 1.8h |
| 36 | 1.3.3.1.6 | Analysis system future | milestone | 0d? | 2011-10-25 A | 2011-10-25 A | 24 | 100% |  |  |  | 2011-10-01 | 2011-10-01 | finish no earlier than 2011-10-25 | Quyet [20%] |  |  |
| 37 | 1.3.3.2 | Review |  | 10.06d? | 2011-11-16 A | 2011-12-08 A | 30 | 100% |  |  |  |  |  | finish no earlier than 2011-10-18 | Dang; Loc; Nguyen; Nhung; Quyet; Tan; Tung; Tuong | 644h | 644h |
| 38 | 1.3.3.3 | Send Concept Operation to customer |  | 0.75d | 2011-11-10 A | 2011-11-10 A |  | 100% |  |  |  | 2011-11-10 | 2011-11-10 | start no earlier than 2011-11-10 | Nhung | 6h | 6h |
| 39 | 1.3.3.4 | **Update ConsOpt** |  | 2.5d? | 2011-11-11 A | 2011-11-16 A |  | 100% |  |  |  | 2011-11-21 | 2011-11-30 |  |  | 18h | 18h |
| 40 | 1.3.3.4.1 | Update Information Catgegories |  | 2.25d? | 2011-11-11 A | 2011-11-16 A | 38 | 100% |  |  |  |  |  |  | Quyet [50%] | 9h | 9h |
| 41 | 1.3.3.4.2 | Update Processes |  | 2.25d? | 2011-11-11 A | 2011-11-16 A | 38 | 100% |  |  |  |  |  |  | Nhung [50%] | 9h | 9h |
| 42 | 1.3.4 | **Develop SRS** |  | 50.44d? | 2011-10-08 A | 2012-01-17 A |  | 100% | 2011-10-23 | 2011-11-20 | 29d | 2011-10-01 | 2011-10-04 |  |  | 788.75h | 788.75h |
| 43 | 1.3.4.1 | **Document Software Requirement Specification (Draft version)** |  | 46.19d? | 2011-10-08 A | 2012-01-07 A |  | 100% |  |  |  | 2011-10-01 | 2011-10-03 |  |  | 179.5h | 179.5h |
| 44 | 1.3.4.1.1 | **Develop use case specification** |  | 10.5d? | 2011-10-08 A | 2011-10-28 A |  | 100% |  |  |  | 2011-10-01 | 2011-10-03 |  |  | 54h | 54h |
| 45 | 1.3.4.1.1.1 | Draw use cases |  | 3d? | 2011-10-21 A | 2011-10-27 A | 29 | 100% |  |  |  |  |  | finish no earlier than 2011-10-23 | Dang | 24h | 24h |
| 46 | 1.3.4.1.1.2 | Draw activity diagram for use cases |  | 2.31d? | 2011-10-25 A | 2011-10-28 A | 35 | 100% |  |  |  |  |  | start no earlier than 2011-10-21 | Loc | 18.5h | 18.5h |
| 47 | 1.3.4.1.1.3 | Descripe use case |  | 1.44d? | 2011-10-08 A | 2011-10-11 A | 34 | 100% |  |  |  |  |  | start no earlier than 2011-10-06 | Tung | 11.5h | 11.5h |
| 48 | 1.3.4.1.2 | Develop interfaces |  | 18d? | 2011-11-29 A | 2012-01-07 A | 41 | 100% |  |  |  | 2011-10-01 | 2011-10-02 | start no earlier than 2011-11-29 | Nhung | 125.5h | 125.5h |
| 49 | 1.3.4.2 | Review |  | 8.31d? | 2011-10-11 A | 2011-10-28 A | 47 | 100% |  |  |  | 2011-10-01 | 2011-10-01 |  | Dang; Loc; Nguyen; Nhung; Quyet; Tan; Tung; Tuong | 532h | 532h |
| 50 | 1.3.4.3 | Update SRS |  | 1.44d? | 2011-10-29 A | 2011-11-01 A | 49 | 100% |  |  |  |  |  |  | Loc | 11.5h | 11.5h |
| 51 | 1.3.4.4 | Software Requirement Specification (Final version) |  | 6d? | 2011-11-01 A | 2011-11-06 A | 50 | 100% |  |  |  |  |  | finish no earlier than 2011-11-01 | Dang | 48h | 48h |
| 52 | 1.3.4.5 | Upadate interfaces |  | 4.44d? | 2012-01-07 A | 2012-01-17 A | 48 | 100% |  |  |  |  |  | finish no earlier than 2012-01-17 | Dang [50%] | 17.75h | 17.75h |

| ID | WBS | Task | Type | Duration | Start | Finish | Predecessors | Complete | Remaining | Baseline start | Baseline finish | Baseline duration | Baseline 1 start | Baseline 1 finish | Total slack | Constraint | Calendar | Resources | Work | Actual work |
| --- | --- | --- | --- | --- | --- | --- | --- | --- | --- | --- | --- | --- | --- | --- | --- | --- | --- | --- | --- | --- |
| 53 | 1.4 | **Architect Design Analysis** |  | 46.94d? | 2011-10-08 A | 2012-01-10 A |  | 100% |  | 2011-10-24 | 2011-12-25 | 63d? | 2011-10-15 | 2011-12-29 |  |  |  |  | 416.5h | 416.5h |
| 54 | 1.4.1 | **Develop architecture driver document (ADD)** |  | 16d? | 2011-10-08 A | 2011-11-09 A |  | 100% |  | 2011-12-25 | 2011-12-25 | 0d? | 2011-10-15 | 2011-12-25 |  |  |  |  | 102h | 102h |
| 55 | 1.4.1.1 | Discover architecture drivers |  | 9d | 2011-10-08 A | 2011-10-28 A | 24 | 100% |  | 2011-10-24 | 2011-11-03 | 11d | 2011-10-15 | 2011-10-17 |  | finish no earlier than 2011-10-23 |  | Tan [50%]; Tuong [50%] | 48h | 48h |
| 56 | 1.4.1.2 | Document ADD(Draft version) | milestone | 0d | 2011-10-31 A | 2011-10-31 A | 55 | 100% |  | 2011-11-04 | 2011-11-05 | 2d | 2011-10-17 | 2011-10-22 |  | finish no earlier than 2011-10-31 |  | Tan [50%]; Tuong [50%] |  |  |
| 57 | 1.4.1.3 | Review | milestone | 0d | 2011-10-31 A | 2011-10-31 A | 56 | 100% |  | 2011-11-06 | 2011-11-06 | 1d | 2011-10-22 | 2011-10-24 |  | finish no earlier than 2011-10-27 |  | Tan [50%]; Tuong [50%] |  |  |
| 58 | 1.4.1.4 | Document ADD(Final version) |  | 9d? | 2011-11-01 A | 2011-11-09 A | 57 | 100% |  |  |  |  |  |  |  | finish no earlier than 2011-11-05 |  | Tan [50%]; Tuong [50%] | 54h | 54h |
| 59 | 1.4.2 | **Develop architecture design** |  | 30.94d | 2011-11-10 A | 2012-01-10 A |  | 100% |  | 2011-11-13 | 2011-11-13 | 1d | 2011-10-23 | 2011-12-29 |  |  |  |  | 314.5h | 314.5h |
| 60 | 1.4.2.1 | Research about new pattern |  | 6.75d | 2011-11-10 A | 2011-11-24 A | 58 | 100% |  | 2011-11-14 | 2011-12-05 | 22d | 2011-10-23 | 2011-11-01 |  | finish no earlier than 2011-11-13 |  | Tan; Tuong | 74h | 74h |
| 61 | 1.4.2.2 | Document AD (Draft version) |  | 3.75d | 2011-11-24 A | 2011-12-01 A | 60 | 100% |  | 2011-12-06 | 2011-12-06 | 1d | 2011-11-02 | 2011-11-16 |  | finish no earlier than 2011-11-13 |  | Tan; Tuong | 45h | 45h |
| 62 | 1.4.2.3 | Review |  | 3.5d | 2011-12-02 A | 2011-12-09 A | 61 | 100% |  | 2011-12-07 | 2011-12-10 | 4d | 2011-11-16 | 2011-11-18 |  | finish no earlier than 2011-11-20 |  | Tan; Tuong | 45h | 45h |
| 63 | 1.4.2.4 | Document AD (Final version) |  | 13.44d | 2011-12-10 A | 2012-01-10 A | 62 | 100% |  | 2011-12-12 | 2011-12-13 | 2d | 2011-12-19 | 2011-12-24 |  | finish no earlier than 2011-12-31 |  | Tan; Tuong | 150.5h | 150.5h |
| 64 | 1.5 | Design Database |  | 6.25d | 2011-12-27 A | 2012-01-10 A | 63 | 100% |  | 2011-12-14 | 2011-12-24 | 11d | 2011-11-17 | 2011-12-29 |  |  |  | Tuong | 50h | 50h |
| 65 | 1.6 | **Testing** |  | 36.75d | 2012-01-18 | 2012-03-14 |  |  |  |  |  |  |  |  | 31.31d |  | HRM_hk2.0 |  | 120h |  |
| 66 | 1.6.1 | **Design test case** |  | 36.75d | 2012-01-18 | 2012-03-14 |  |  |  |  |  |  |  |  | 31.31d |  | HRM_hk2.0 |  | 120h |  |
| 67 | 1.6.1.1 | Acceptance test case |  | 10d | 2012-01-18 | 2012-02-10 | 22 |  |  |  |  |  |  |  | 53.06d |  | HRM_hk2.0 | Tung | 80h |  |
| 68 | 1.6.1.2 | System test case |  | 5d | 2012-03-03 | 2012-03-14 | 53 |  |  |  |  |  |  |  | 31.31d | finish no earlier than 2012-03-14 | HRM_hk2.0 | Tung | 40h |  |
| 69 | 1.7 | **Training Code** |  | 47.75d | 2011-11-10 A | 2012-02-14 |  | 97% | 1.26d | 2012-03-04 | 2012-03-04 | 0d? | 2011-11-28 | 2011-12-29 | 0d |  |  |  | 1983.5h | 1967.5h |
| 70 | 1.7.1 | ID generate |  | 34d | 2011-11-10 A | 2012-01-27 A | 22, 53 | 100% |  | 2012-04-04 | 2012-04-04 | 0d? | 2011-11-28 | 2011-12-15 |  | start no earlier than 2011-11-10 |  | Dang; Loc; Nguyen; Nhung; Quyet; Tan [50%]; Tung; Tuong | 1808.5h | 1808.5h |
| 71 | 1.7.2 | Programming: Manage Catalog |  | 40d | 2011-12-31 A | 2012-02-08 A | 70 | 100% |  |  |  |  |  |  |  |  |  | Tan [50%] | 159h | 159h |
| 72 | 1.7.3 | Test Manage Catalog |  | 2d | 2012-02-09 | 2012-02-14 | 71 |  |  |  |  |  |  |  | 0d |  |  | Tung | 16h |  |
| 73 | 1.8 | **Increment 1: Detail Information Management** |  | 15.75d? | 2012-02-14 | 2012-03-09 |  |  |  |  |  |  |  |  | 0d |  | HRM_hk2.0 |  | 168h |  |
| 74 | 1.8.1 | **Detail Information Management** |  | 7.25d | 2012-02-14 | 2012-02-24 |  |  |  |  |  |  |  |  | 0d |  | HRM_hk2.0 |  | 40h |  |
| 75 | 1.8.1.1 | Design Detail Information Management |  | 2d | 2012-02-14 | 2012-02-17 | 72 |  |  |  |  |  |  |  | 0d | start no earlier than 2012-02-13 | HRM_hk2.0 | Dang | 16h |  |
| 76 | 1.8.1.2 | Code Detail Information Management |  | 2d | 2012-02-17 | 2012-02-22 | 75 |  |  |  |  |  |  |  | 0d |  | HRM_hk2.0 | Tan | 16h |  |
| 77 | 1.8.1.3 | Test Detail Information Management |  | 1d | 2012-02-22 | 2012-02-24 | 76 |  |  |  |  |  |  |  | 0d |  | HRM_hk2.0 | Nguyen | 8h |  |

| ID | WBS | Task | Duration | Start | Finish | Predecessors | Total slack | Free slack | Calendar | Resources | Work |
| --- | --- | --- | --- | --- | --- | --- | --- | --- | --- | --- | --- |
| 78 | 1.8.2 | **Employee Code Setting** | 3d | 2012-02-24 | 2012-02-29 |  | 4.25d | 0d | HRM_hk2.0 |  | 16h |
| 79 | 1.8.2.1 | Design Employee Code Setting | 0.5d | 2012-02-24 | 2012-02-25 | 74 | 4.25d | 0d | HRM_hk2.0 | Dang | 4h |
| 80 | 1.8.2.2 | Code Employee Code Setting | 1d | 2012-02-25 | 2012-02-28 | 76, 79 | 4.25d | 0d | HRM_hk2.0 | Tan | 8h |
| 81 | 1.8.2.3 | Test Employee Code Setting | 0.5d | 2012-02-28 | 2012-02-29 | 80 | 4.25d |  | HRM_hk2.0 | Nguyen | 4h |
| 82 | 1.8.3 | **Column Setting** | 3.25d? | 2012-02-25 | 2012-03-02 |  | 1.75d | 0d | HRM_hk2.0 |  | 16h |
| 83 | 1.8.3.1 | Design Column Setting | 0.5d? | 2012-02-25 | 2012-02-28 | 78SS+1d | 1.25d | 0d | HRM_hk2.0 | Dang | 4h |
| 84 | 1.8.3.2 | Code Column Setting | 1d? | 2012-02-28 | 2012-02-29 | 83 | 1.25d | 0d | HRM_hk2.0 | Tan | 8h |
| 85 | 1.8.3.3 | Test Column Setting | 0.5d? | 2012-02-29 | 2012-03-02 | 84 | 3d |  | HRM_hk2.0 | Nguyen | 4h |
| 86 | 1.8.4 | **Certificate Management** | 3.5d | 2012-02-28 | 2012-03-03 |  | 1.25d | 0.19d | HRM_hk2.0 |  | 16h |
| 87 | 1.8.4.1 | Design Certificate Management | 0.5d | 2012-02-28 | 2012-02-29 | 82SS+1d | 1.25d | 0d | HRM_hk2.0 | Dang | 4h |
| 88 | 1.8.4.2 | Code Certificate Management | 1d | 2012-02-29 | 2012-03-03 | 84, 87 | 1.5d | 0d | HRM_hk2.0 | Tan | 8h |
| 89 | 1.8.4.3 | Test Certificate Management | 0.5d | 2012-03-03 | 2012-03-03 | 88 | 1.5d |  | HRM_hk2.0 | Nguyen | 4h |
| 90 | 1.8.5 | **Supported People Management** | 3d? | 2012-02-24 | 2012-02-29 |  | 1d |  | HRM_hk2.0 |  | 16h |
| 91 | 1.8.5.1 | Design Supported People Management | 0.5d? | 2012-02-24 | 2012-02-25 | 74 | 1d | 0d | HRM_hk2.0 | Nguyen | 4h |
| 92 | 1.8.5.2 | Code Supported People Management | 1d? | 2012-02-25 | 2012-02-28 | 91 | 1d | 0d | HRM_hk2.0 | Nguyen | 8h |
| 93 | 1.8.5.3 | Test Supported People Management | 0.5d? | 2012-02-28 | 2012-02-29 | 92 | 1d | 0d | HRM_hk2.0 | Dang | 4h |
| 94 | 1.8.6 | **Family Relationship Management** | 5.25d? | 2012-02-24 | 2012-03-03 |  | 2d | 0.44d | HRM_hk2.0 |  | 28h |
| 95 | 1.8.6.1 | Design Family Relationship Management | 1d | 2012-02-24 | 2012-02-28 | 74 | 1.5d | 0d | HRM_hk2.0 | Nhung | 8h |
| 96 | 1.8.6.2 | Code Family Relationship Management | 2d | 2012-02-28 | 2012-03-02 | 95 | 1.5d | 0d | HRM_hk2.0 | Nhung | 16h |
| 97 | 1.8.6.3 | Test Family Relationship Management | 0.5d? | 2012-03-02 | 2012-03-03 | 96 | 2d |  | HRM_hk2.0 | Tung | 4h |
| 98 | 1.8.7 | **Staff History** | 3.25d? | 2012-02-29 | 2012-03-06 |  | 1d | 0d | HRM_hk2.0 |  | 16h |
| 99 | 1.8.7.1 | Design Staff History | 0.5d? | 2012-02-29 | 2012-03-02 | 93 | 1d | 0d | HRM_hk2.0 | Nguyen | 4h |
| 100 | 1.8.7.2 | Code Staff History | 1d? | 2012-03-02 | 2012-03-03 | 99 | 1d | 0d | HRM_hk2.0 | Nguyen | 8h |
| 101 | 1.8.7.3 | Test Staff History | 0.5d? | 2012-03-03 | 2012-03-06 | 100 | 1d |  | HRM_hk2.0 | Dang | 4h |
| 102 | 1.8.8 | Integrate | 0.5d | 2012-03-06 | 2012-03-06 | 74, 78, 82, 86, 90, 94, 98 | 1d | 0d | HRM_hk2.0 | Tan; Nguyen; Nhung | 12h |
| 103 | 1.8.9 | Testing | 1d | 2012-03-06 | 2012-03-09 | 102 | 1d |  | HRM_hk2.0 | Tung; Nguyen [50%] | 8h |

| ID | WBS | Task | Duration | Start | Finish | Predecessors | Total slack | Free slack | Calendar | Resources | Work |
| --- | --- | --- | --- | --- | --- | --- | --- | --- | --- | --- | --- |
| 104 | 1.9 | **Increment 2: Training Management** | 16.5d? | 2012-02-28 | 2012-03-24 |  | 0d |  | HRM_hk2.0 |  | 452h |
| 105 | 1.9.1 | **Reward Management** | 3d? | 2012-02-28 | 2012-03-03 |  | 0.69d | 0.19d | HRM_hk2.0 |  | 16h |
| 106 | 1.9.1.1 | Design Reward Management | 0.5d? | 2012-02-28 | 2012-02-29 | 74FS+2d | 0.69d | 0d | HRM_hk2.0 | Tuong | 4h |
| 107 | 1.9.1.2 | Code Reward Management | 1d? | 2012-02-29 | 2012-03-02 | 106 | 0.94d | 0d | HRM_hk2.0 | Tuong | 8h |
| 108 | 1.9.1.3 | Test Reward Management | 0.5d? | 2012-03-02 | 2012-03-03 | 107 | 0.69d |  | HRM_hk2.0 | Loc | 4h |
| 109 | 1.9.2 | **Staff Internship Management** | 3d? | 2012-02-28 | 2012-03-03 |  | 4.5d | 0d | HRM_hk2.0 |  | 16h |
| 110 | 1.9.2.1 | Design Staff Internship Management | 0.5d? | 2012-02-28 | 2012-02-29 | 74FS+2d | 4.5d | 0d | HRM_hk2.0 | Loc | 4h |
| 111 | 1.9.2.2 | Code Staff Internship Management | 1d? | 2012-02-29 | 2012-03-02 | 110 | 4.5d | 0d | HRM_hk2.0 | Loc | 8h |
| 112 | 1.9.2.3 | Test Staff Internship Management | 0.5d? | 2012-03-02 | 2012-03-03 | 111 | 4.5d |  | HRM_hk2.0 | Nhung | 4h |
| 113 | 1.9.3 | **Training Result Management** | 3d? | 2012-02-28 | 2012-03-03 |  | 0d |  | HRM_hk2.0 |  | 16h |
| 114 | 1.9.3.1 | Design Training Result Management | 0.5d? | 2012-02-28 | 2012-02-29 | 74FS+2d | 0d |  | HRM_hk2.0 | Quyet | 4h |
| 115 | 1.9.3.2 | Code Training Result Management | 1d? | 2012-02-29 | 2012-03-02 | 114 | 0d |  | HRM_hk2.0 | Quyet | 8h |
| 116 | 1.9.3.3 | Test Training Result Management | 0.5d? | 2012-03-02 | 2012-03-03 | 115 | 0d |  | HRM_hk2.0 | Tuong | 4h |
| 117 | 1.9.4 | **Facilitate Management** | 2.75d? | 2012-02-29 | 2012-03-03 |  | 1.5d | 0d | HRM_hk2.0 |  | 16h |
| 118 | 1.9.4.1 | Design Facilitate Management | 0.5d? | 2012-02-29 | 2012-02-29 | 87 | 1.5d | 0d | HRM_hk2.0 | Dang | 4h |
| 119 | 1.9.4.2 | Code Facilitate Management | 1d? | 2012-02-29 | 2012-03-03 | 118 | 1.5d | 0d | HRM_hk2.0 | Dang | 8h |
| 120 | 1.9.4.3 | Test Facilitate Management | 0.5d? | 2012-03-03 | 2012-03-03 | 119 | 1.5d |  | HRM_hk2.0 | Tuong | 4h |
| 121 | 1.9.5 | **Union Management** | 2.75d? | 2012-03-09 | 2012-03-13 |  | 3.75d | 0d | HRM_hk2.0 |  | 16h |
| 122 | 1.9.5.1 | Design Union Management | 0.5d? | 2012-03-09 | 2012-03-09 | 73 | 3.75d | 0d | HRM_hk2.0 | Tung | 4h |
| 123 | 1.9.5.2 | Code Union Management | 1d? | 2012-03-09 | 2012-03-13 | 122 | 3.75d | 0d | HRM_hk2.0 | Tung | 8h |
| 124 | 1.9.5.3 | Test Union Management | 0.5d? | 2012-03-13 | 2012-03-13 | 123 | 3.75d |  | HRM_hk2.0 | Nhung | 4h |
| 125 | 1.9.6 | **Task Note Book Management** | 2.75d? | 2012-03-09 | 2012-03-13 |  | 1d | 0d | HRM_hk2.0 |  | 16h |
| 126 | 1.9.6.1 | Design Task Note Book Management | 0.5d? | 2012-03-09 | 2012-03-09 | 73 | 1d | 0d | HRM_hk2.0 | Nhung | 4h |
| 127 | 1.9.6.2 | Code Task Note Book Management | 1d? | 2012-03-09 | 2012-03-13 | 126 | 1d | 0d | HRM_hk2.0 | Nhung | 8h |
| 128 | 1.9.6.3 | Test Task Note Book Management | 0.5d? | 2012-03-13 | 2012-03-13 | 127 | 1d |  | HRM_hk2.0 | Tung | 4h |

| ID | WBS | Task | Duration | Start | Finish | Predecessors | Total slack | Free slack | Constraint | Calendar | Resources | Work |
| --- | --- | --- | --- | --- | --- | --- | --- | --- | --- | --- | --- | --- |
| 129 | 1.9.7 | **Training Course Management** | 3d | 2012-03-13 | 2012-03-17 |  | 1d | 0d |  | HRM_hk2.0 |  | 16h |
| 130 | 1.9.7.1 | Design Training Course Management | 0.5d | 2012-03-13 | 2012-03-14 | 125 | 1d | 0d | start no earlier than 2012-02-28 | HRM_hk2.0 | Nhung | 4h |
| 131 | 1.9.7.2 | Code Training Course Management | 1d | 2012-03-14 | 2012-03-16 | 130 | 1d | 0d |  | HRM_hk2.0 | Nhung | 8h |
| 132 | 1.9.7.3 | Test Training Course Management | 0.5d | 2012-03-16 | 2012-03-17 | 131 | 1d |  |  | HRM_hk2.0 | Quyet | 4h |
| 133 | 1.9.8 | **Internal Training Management** | 2.75d? | 2012-03-10 | 2012-03-14 |  | 1.5d | 0d |  | HRM_hk2.0 |  | 16h |
| 134 | 1.9.8.1 | Design Internal Training Management | 0.5d? | 2012-03-10 | 2012-03-10 | 73FS+1d | 1.5d | 0d |  | HRM_hk2.0 | Nguyen | 4h |
| 135 | 1.9.8.2 | Code Internal Training Management | 1d? | 2012-03-10 | 2012-03-14 | 134 | 1.5d | 0d |  | HRM_hk2.0 | Nguyen | 8h |
| 136 | 1.9.8.3 | Test Internal Training Management | 0.5d? | 2012-03-14 | 2012-03-14 | 135 | 1.5d |  |  | HRM_hk2.0 | Quyet | 4h |
| 137 | 1.9.9 | **Emulation Management** | 3.25d? | 2012-03-14 | 2012-03-20 |  | 1.25d | 0.88d |  | HRM_hk2.0 |  | 16h |
| 138 | 1.9.9.1 | Design Emulation Management | 0.5d? | 2012-03-14 | 2012-03-16 | 133 | 1.25d | 0d |  | HRM_hk2.0 | Nguyen | 4h |
| 139 | 1.9.9.2 | Code Emulation Management | 1d? | 2012-03-16 | 2012-03-17 | 138 | 1.25d | 0d |  | HRM_hk2.0 | Nguyen | 8h |
| 140 | 1.9.9.3 | Test Emulation Management | 0.5d? | 2012-03-17 | 2012-03-20 | 139 | 1.25d |  |  | HRM_hk2.0 | Dang | 4h |
| 141 | 1.9.10 | **Lecture Probation Management** | 3.25d? | 2012-03-17 | 2012-03-23 |  | 1d |  |  | HRM_hk2.0 |  | 16h |
| 142 | 1.9.10.1 | Design Lecture Probation Management | 0.5d? | 2012-03-17 | 2012-03-20 | 129 | 1d | 0d |  | HRM_hk2.0 | Nhung | 4h |
| 143 | 1.9.10.2 | Code Lecture Probation Management | 1d? | 2012-03-20 | 2012-03-21 | 142 | 1d | 0d |  | HRM_hk2.0 | Nhung | 8h |
| 144 | 1.9.10.3 | Test Lecture Probation Management | 0.5d? | 2012-03-21 | 2012-03-23 | 143 | 1d |  |  | HRM_hk2.0 | Tung | 4h |
| 145 | 1.9.11 | **Mobilization Management** | 2.75d? | 2012-03-03 | 2012-03-07 |  | 4.5d | 0d |  | HRM_hk2.0 |  | 16h |
| 146 | 1.9.11.1 | Design Mobilization Management | 0.5d? | 2012-03-03 | 2012-03-03 | 109 | 4.5d | 0d |  | HRM_hk2.0 | Loc | 4h |
| 147 | 1.9.11.2 | Code Mobilization Management | 1d? | 2012-03-03 | 2012-03-07 | 146 | 4.5d | 0d |  | HRM_hk2.0 | Loc | 8h |
| 148 | 1.9.11.3 | Test Mobilization Management | 0.5d? | 2012-03-07 | 2012-03-07 | 147 | 4.5d |  |  | HRM_hk2.0 | Nhung | 4h |
| 149 | 1.9.12 | **Penalty Management** | 2.75d? | 2012-03-06 | 2012-03-09 |  | 0.56d | 0d |  | HRM_hk2.0 |  | 16h |
| 150 | 1.9.12.1 | Design Penalty Management | 0.5d? | 2012-03-06 | 2012-03-06 | 105FS+1d | 0.56d | 0d |  | HRM_hk2.0 | Tuong | 4h |
| 151 | 1.9.12.2 | Code Penalty Management | 1d? | 2012-03-06 | 2012-03-07 | 150 | 10.75d | 1d |  | HRM_hk2.0 | Tuong | 8h |
| 152 | 1.9.12.3 | Test Penalty Management | 0.5d? | 2012-03-09 | 2012-03-09 | 151 | 0.56d |  |  | HRM_hk2.0 | Loc | 4h |

| ID | WBS | Task | Duration | Start | Finish | Predecessors | Total slack | Free slack | Calendar | Resources | Work |
| --- | --- | --- | --- | --- | --- | --- | --- | --- | --- | --- | --- |
| 153 | 1.9.13 | **Lecture Position Management** | 3d? | 2012-03-09 | 2012-03-14 | 149 | 0.81d | 0d | HRM_hk2.0 |  | 16h |
| 154 | 1.9.13.1 | Design Lecture Position Management | 0.5d? | 2012-03-09 | 2012-03-10 | 149 | 10.5d | 0d | HRM_hk2.0 | Tuong | 4h |
| 155 | 1.9.13.2 | Code Lecture Position Management | 1d? | 2012-03-10 | 2012-03-13 | 154 | 10.25d | 0d | HRM_hk2.0 | Tuong | 8h |
| 156 | 1.9.13.3 | Test Lecture Position Management | 0.5d? | 2012-03-13 | 2012-03-14 | 155 | 10.5d |  | HRM_hk2.0 | Loc | 4h |
| 157 | 1.9.14 | **Communist Party Management** | 2.75d? | 2012-03-16 | 2012-03-20 |  | 1.06d | 0.69d | HRM_hk2.0 |  | 16h |
| 158 | 1.9.14.1 | Design Communist Party Management | 0.5d? | 2012-03-16 | 2012-03-16 | 153FS+1d | 1.06d | 0d | HRM_hk2.0 | Tuong | 4h |
| 159 | 1.9.14.2 | Code Communist Party Management | 1d? | 2012-03-16 | 2012-03-17 | 158 | 11d | 0d | HRM_hk2.0 | Tuong | 8h |
| 160 | 1.9.14.3 | Test Communist Party Management | 0.5d? | 2012-03-20 | 2012-03-20 | 159 | 1.06d |  | HRM_hk2.0 | Loc | 4h |
| 161 | 1.9.15 | **Trade Union Management** | 3d? | 2012-03-13 | 2012-03-17 | 121 | 4.25d |  | HRM_hk2.0 |  | 16h |
| 162 | 1.9.15.1 | Design Trade Union Management | 0.5d? | 2012-03-13 | 2012-03-14 | 121 | 4.25d | 0d | HRM_hk2.0 | Tung | 4h |
| 163 | 1.9.15.2 | Code Trade Union Management | 1d? | 2012-03-14 | 2012-03-16 | 162 | 4.25d | 0d | HRM_hk2.0 | Tung | 8h |
| 164 | 1.9.15.3 | Test Trade Union Management | 0.5d? | 2012-03-16 | 2012-03-17 | 163 | 4.25d |  | HRM_hk2.0 | Nhung | 4h |
| 165 | 1.9.16 | **Syllabus Management** | 3.25d? | 2012-03-07 | 2012-03-13 |  | 4.5d | 0d | HRM_hk2.0 |  | 16h |
| 166 | 1.9.16.1 | Design Syllabus Management | 0.5d? | 2012-03-07 | 2012-03-09 | 145 | 4.5d | 0d | HRM_hk2.0 | Loc | 4h |
| 167 | 1.9.16.2 | Code Syllabus Management | 1d? | 2012-03-09 | 2012-03-10 | 166 | 4.5d | 0d | HRM_hk2.0 | Loc | 8h |
| 168 | 1.9.16.3 | Test Syllabus Management | 0.5d? | 2012-03-10 | 2012-03-13 | 167 | 4.5d |  | HRM_hk2.0 | Quyet | 4h |
| 169 | 1.9.17 | **Science Research Management** | 3d? | 2012-03-13 | 2012-03-17 | 165 | 4.5d |  | HRM_hk2.0 |  | 16h |
| 170 | 1.9.17.1 | Design Science Research Management | 0.5d? | 2012-03-13 | 2012-03-14 | 165 | 4.5d | 0d | HRM_hk2.0 | Loc | 4h |
| 171 | 1.9.17.2 | Code Science Research Management | 1d? | 2012-03-14 | 2012-03-16 | 170 | 4.5d | 0d | HRM_hk2.0 | Loc | 8h |
| 172 | 1.9.17.3 | Test Science Research Management | 0.5d? | 2012-03-16 | 2012-03-17 | 171 | 4.5d |  | HRM_hk2.0 | Quyet | 4h |
| 173 | 1.9.18 | **Other Management** | 2.75d? | 2012-03-03 | 2012-03-07 |  | 0d |  | HRM_hk2.0 |  | 16h |
| 174 | 1.9.18.1 | Design Other Management | 0.5d? | 2012-03-03 | 2012-03-03 | 113 | 0d |  | HRM_hk2.0 | Quyet | 4h |
| 175 | 1.9.18.2 | Code Other Management | 1d? | 2012-03-03 | 2012-03-07 | 174 | 0d |  | HRM_hk2.0 | Quyet | 8h |
| 176 | 1.9.18.3 | Test Other Management | 0.5d? | 2012-03-07 | 2012-03-07 | 175 | 0d |  | HRM_hk2.0 | Tan | 4h |

| ID | WBS | Task | Duration | Start | Finish | Predecessors | Total slack | Free slack | Calendar | Resources | Work |
| --- | --- | --- | --- | --- | --- | --- | --- | --- | --- | --- | --- |
| 177 | 1.9.19 | **Work Management** | 3.25d? | 2012-03-07 | 2012-03-13 |  | 0d |  | HRM_hk2.0 |  | 16h |
| 178 | 1.9.19.1 | Design Work Management | 0.5d? | 2012-03-07 | 2012-03-09 | 173 | 0d |  | HRM_hk2.0 | Quyet | 4h |
| 179 | 1.9.19.2 | Code Work Management | 1d? | 2012-03-09 | 2012-03-10 | 178 | 0d |  | HRM_hk2.0 | Quyet | 8h |
| 180 | 1.9.19.3 | Test Work Management | 0.5d? | 2012-03-10 | 2012-03-13 | 179 | 0d |  | HRM_hk2.0 | Tan | 4h |
| 181 | 1.9.20 | **Master Thesis Guideline Management** | 3d? | 2012-03-13 | 2012-03-17 |  | 0d |  | HRM_hk2.0 |  | 16h |
| 182 | 1.9.20.1 | Design Master Thesis Guideline Management | 0.5d? | 2012-03-13 | 2012-03-14 | 177 | 0d |  | HRM_hk2.0 | Quyet | 4h |
| 183 | 1.9.20.2 | Code Master Thesis Guideline Management | 1d? | 2012-03-14 | 2012-03-16 | 182 | 0d |  | HRM_hk2.0 | Quyet | 8h |
| 184 | 1.9.20.3 | Test Master Thesis Guideline Management | 0.5d? | 2012-03-16 | 2012-03-17 | 183 | 0d |  | HRM_hk2.0 | Tan | 4h |
| 185 | 1.9.21 | **Article Management** | 2.75d? | 2012-03-17 | 2012-03-21 |  | 0d |  | HRM_hk2.0 |  | 16h |
| 186 | 1.9.21.1 | Design Article Management | 0.5d? | 2012-03-17 | 2012-03-17 | 181 | 0d |  | HRM_hk2.0 | Quyet | 4h |
| 187 | 1.9.21.2 | Code Article Management | 1d? | 2012-03-17 | 2012-03-21 | 186 | 0d |  | HRM_hk2.0 | Quyet | 8h |
| 188 | 1.9.21.3 | Test Article Management | 0.5d? | 2012-03-21 | 2012-03-21 | 187 | 0d |  | HRM_hk2.0 | Tan | 4h |
| 189 | 1.9.22 | **Subject Management** | 4d? | 2012-03-03 | 2012-03-10 |  | 1.5d | 0d | HRM_hk2.0 |  | 20h |
| 190 | 1.9.22.1 | Design Subject Management | 1d? | 2012-03-03 | 2012-03-07 | 117 | 1.5d | 0d | HRM_hk2.0 | Dang | 8h |
| 191 | 1.9.22.2 | Code Subject Management | 1d? | 2012-03-07 | 2012-03-09 | 190 | 1.25d | 0d | HRM_hk2.0 | Dang | 8h |
| 192 | 1.9.22.3 | Test Subject Management | 0.5d? | 2012-03-09 | 2012-03-10 | 191 | 1.25d |  | HRM_hk2.0 | Tuong | 4h |
| 193 | 1.9.23 | **Income Management** | 2.75d? | 2012-03-10 | 2012-03-14 |  | 1.5d | 0d | HRM_hk2.0 |  | 16h |
| 194 | 1.9.23.1 | Design Income Management | 0.5d? | 2012-03-10 | 2012-03-10 | 189 | 1.5d | 0d | HRM_hk2.0 | Dang | 4h |
| 195 | 1.9.23.2 | Code Income Management | 1d? | 2012-03-10 | 2012-03-14 | 194 | 1.5d | 0d | HRM_hk2.0 | Dang | 8h |
| 196 | 1.9.23.3 | Test Income Management | 0.5d? | 2012-03-14 | 2012-03-14 | 195 | 1.5d |  | HRM_hk2.0 | Tuong | 4h |
| 197 | 1.9.24 | **Salary Coefficient Management** | 3.25d? | 2012-03-14 | 2012-03-20 |  | 1.25d | 0.88d | HRM_hk2.0 |  | 16h |
| 198 | 1.9.24.1 | Design Salary Coefficient Management | 0.5d? | 2012-03-14 | 2012-03-16 | 193 | 1.25d | 0d | HRM_hk2.0 | Dang | 4h |
| 199 | 1.9.24.2 | Code Salary Coefficient Management | 1d? | 2012-03-16 | 2012-03-17 | 198 | 1.25d | 0d | HRM_hk2.0 | Dang | 8h |
| 200 | 1.9.24.3 | Test Salary Coefficient Management | 0.5d? | 2012-03-17 | 2012-03-20 | 199 | 1.25d |  | HRM_hk2.0 | Tuong | 4h |
| 201 | 1.9.25 | Integrate | 0.5d? | 2012-03-21 | 2012-03-23 | 94, 117, 137, 157, 185, 193, 197 | 0d |  | HRM_hk2.0 | Dang; Loc; Nguyen; Nhung; Quyet; Tan; Tung; Tuong | 32h |
| 202 | 1.9.26 | Testing | 0.5d? | 2012-03-23 | 2012-03-24 | 201 | 0d |  | HRM_hk2.0 | Tuong; Tung; Dang; Loc; Nguyen; Nhung; Quyet; Tan | 32h |

| ID | WBS | Task | Duration | Start | Finish | Predecessors | Total slack | Constraint | Calendar | Resources | Work |
| --- | --- | --- | --- | --- | --- | --- | --- | --- | --- | --- | --- |
| 203 | 1.10 | **Increment 6: Report** | 10.5d | 2012-03-24 | 2012-04-10 |  | 0d |  | HRM_hk2.0 |  | 64h |
| 204 | 1.10.1 | **Report Management** | 7.25d | 2012-03-24 | 2012-04-04 |  | 0d |  | HRM_hk2.0 |  | 40h |
| 205 | 1.10.1.1 | Design Report | 1d | 2012-03-24 | 2012-03-27 | 104 | 0d |  | HRM_hk2.0 | Loc | 8h |
| 206 | 1.10.1.2 | Code Report | 3d | 2012-03-27 | 2012-04-03 | 188, 202, 205 | 0d |  | HRM_hk2.0 | Tan | 24h |
| 207 | 1.10.1.3 | Test Report | 1d | 2012-04-03 | 2012-04-04 | 206 | 0d |  | HRM_hk2.0 | Dang | 8h |
| 208 | 1.10.2 | Integrate | 1d | 2012-04-04 | 2012-04-07 | 207 | 0d |  | HRM_hk2.0 | Tan | 8h |
| 209 | 1.10.3 | Test | 1d | 2012-04-07 | 2012-04-10 | 208 | 0d |  | HRM_hk2.0 | Dang; Tung | 16h |
| 210 | 1.11 | Conduct System test | 2d | 2012-04-10 | 2012-04-14 | 203 | 0d |  | HRM_hk2.0 | Dang; Loc; Nguyen; Nhung; Quyet; Tan; Tung; Tuong | 128h |
| 211 | 1.12 | Conduct Acceptance test | 2d | 2012-04-14 | 2012-04-18 | 210 | 0d |  | HRM_hk2.0 | Dang; Loc; Nguyen; Nhung; Quyet; Tan; Tung; Tuong | 128h |
| 212 | 1.13 | Deployment | 2d | 2012-04-18 | 2012-04-24 | 211 | 0d | finish no earlier than 2012-03-07 | HRM_hk2.0 | Dang; Loc; Nguyen; Nhung; Quyet; Tan; Tung; Tuong | 120h |
| 213 | 1.14 | Deliver to customer | 3d | 2012-04-24 | 2012-05-01 | 212 | 0d |  | HRM_hk2.0 | Dang; Loc; Nguyen; Nhung; Quyet; Tan; Tung; Tuong | 180h |
| 214 | 1.15 | Maintaining | 1d | 2012-05-01 | 2012-05-02 | 213 | 0d |  | HRM_hk2.0 | Dang; Loc; Nguyen; Nhung; Quyet; Tan; Tung; Tuong | 64h |
